# Project Schedule

Schedule from MS Project, 2026-02-09 to 2026-10-30.

## Calendars

- Standard: Mon-Fri 08:00-12:00, 13:00-17:00; Sat-Sun off.

## Resources

| Resource |
| --- |
| All |
| Katleho Makhoali |
| Paballo Lebusa |
| Lerato |
| Lerato Mahlatsi |
| Mamello Lepitla |
| MoMpho Motaung |
| David Adegbola |
| Mpho Motaung |

## Schedule

| ID | Task | Type | Duration | Start | Finish | Predecessors | Constraint | Resources | Work |
| --- | --- | --- | --- | --- | --- | --- | --- | --- | --- |
| 1 | PHASE 1: Planning and Requirement Analysis (20%) | manual | 15d | 2026-08-17 | 2026-09-04 |  |  | All | 120h |
| 2 | Module introduction & group formation | manual | 5d | 2026-08-17 | 2026-08-21 |  |  | All | 40h |
| 3 | Stakeholder engagement & problem identification | manual | 5d | 2026-08-17 | 2026-08-21 |  |  | All | 40h |
| 4 | Current-process analysis & requirements gathering | manual | 5d | 2026-08-17 | 2026-08-21 | 3 | start no earlier than 2026-08-17 | Paballo Lebusa | 40h |
| 5 | Draft Initial SRS | manual | 3d | 2026-08-20 | 2026-08-22 | 4 |  | Mamello Lepitla | 24h |
| 6 | Formal stakeholder interview | manual | 1d | 2026-08-24 | 2026-08-24 | 3 |  | All | 8h |
| 7 | Update SRS with real interview findings | manual | 1d | 2026-08-25 | 2026-08-25 | 6 |  | Mamello Lepitla | 8h |
| 8 | Set up GitHub repository | manual | 1d | 2026-08-22 | 2026-08-22 |  |  | Katleho Makhoali | 8h |
| 9 | Set up Supabase project | manual | 0.5d | 2026-08-26 | 2026-08-26 |  |  | Mamello Lepitla | 4h |
| 10 | Milestone: Unit 1 Progress Checkpoint submitted | milestone, manual | 0d | 2026-08-26 | 2026-08-26 | 7, 8, 9 |  | All |  |
| 11 | Feasibility study (technical, operational, economic, schedule, legal, ethical) | manual | 2d | 2026-08-26 | 2026-08-27 | 7 |  | Lerato Mahlatsi | 16h |
| 12 | Risk register (8-12 risks) & mitigation planning | manual | 3d | 2026-08-26 | 2026-08-28 | 7 |  | Lerato Mahlatsi | 24h |
| 13 | Baseline Microsoft Project schedule | manual | 1d | 2026-08-27 | 2026-08-27 | 11, 12 |  | Paballo Lebusa | 8h |
| 14 | Compile Phase 1 portfolio (SRS + feasibility + risk + reflection) | manual | 2d | 2026-08-27 | 2026-08-28 | 11, 12, 13 |  | MoMpho Motaung | 16h |
| 15 | Group Phase 1 reflection | manual | 1d | 2026-08-31 | 2026-08-31 | 14 |  | All | 8h |
| 16 | Milestone: Phase 1 presentation - Assessment 1 (20%) | milestone, manual | 0d | 2026-09-01 | 2026-09-01 | 14, 15 |  | All |  |
| 17 | PHASE 2: System Architecture and Design (30%) | manual | 15d | 2026-09-07 | 2026-09-25 | 1 |  | All | 120h |
| 18 | System architecture linking Flutter, ASP.NET & Supabase | manual | 3d | 2026-09-01 | 2026-09-03 | 16 |  | Paballo Lebusa | 24h |
| 19 | UML diagrams & Entity Relationship Diagram | manual | 5d | 2026-09-07 | 2026-09-11 | 16 |  | David Adegbola; Katleho Makhoali; Mamello Lepitla; Mpho Motaung | 160h |
| 20 | Interface prototypes (Flutter & ASP.NET) | manual | 5d | 2026-09-14 | 2026-09-18 | 18, 19 |  | Lerato Mahlatsi | 40h |
| 21 | Supabase database & access-control design | manual | 3d | 2026-09-14 | 2026-09-16 | 18 |  | Mamello Lepitla | 24h |
| 22 | Stakeholder feedback on design | manual | 1d | 2026-09-18 | 2026-09-18 | 20 |  | David Adegbola | 8h |
| 23 | Compile Phase 2 design portfolio & reflection | manual | 2d | 2026-09-21 | 2026-09-22 | 20, 21, 22 |  | Mamello Lepitla | 16h |
| 24 | Milestone: Phase 2 presentation - Assessment 2 (30%) | manual | 1d | 2026-02-09 | 2026-02-09 | 23 |  | All | 8h |
| 25 | PHASE 3: Development, Integration & Evaluation (50%) | manual | 25d | 2026-09-28 | 2026-10-30 | 2 |  | All | 200h |
| 26 | Development Sprint 1 (Flutter, ASP.NET, Supabase) | manual | 5d | 2026-09-28 | 2026-10-02 | 24 |  | All | 40h |
| 27 | Institutional holiday / catch-up on outstanding work | manual | 5d | 2026-10-05 | 2026-10-09 | 26 |  | All | 40h |
| 28 | Development Sprint 2 & integration | manual | 5d | 2026-10-12 | 2026-10-16 | 26 |  | All | 40h |
| 29 | Manual testing, problem log & corrections | manual | 5d | 2026-10-19 | 2026-10-23 | 28 |  | Paballo Lebusa | 40h |
| 30 | Stakeholder/user evaluation | manual | 2d | 2026-10-21 | 2026-10-22 | 28 |  | All | 16h |
| 31 | Final GitHub release, MS Project report & group reflection | manual | 2d | 2026-10-26 | 2026-10-27 | 29, 30 |  | Katleho Makhoali | 16h |
| 32 | Milestone: Final presentation, defence - Assessment 3 (50%) | manual | 5d | 2026-10-26 | 2026-10-30 | 31 |  | All | 40h |
